# C&CProject_MasterPlan

Schedule from MS Project, 2011-10-11 to 2011-10-11.
University Of Information Technology

## Calendars

- Standard: Mon-Fri 08:00-12:00, 13:00-17:00; Sat-Sun off.

## Resources

| Resource |
| --- |
| HuyNVK |
| TuTM |
| TuanVA |
| DungDV |
| DucNH |
| HienTT |
| HuyDV |
| LinhTA |
| ThanhCV |
| ThaoNX |
| ThiVT |
| KhoaVT |
| All Team |
| BaoNDD |
| DungDV + DucNH + TuTM |
| ThanhCV + KhoaVT |
| HuyNVK + HienTT |

## Schedule

| ID | WBS | Task | Duration | Start | Finish | Total slack | Resources | Work |
| --- | --- | --- | --- | --- | --- | --- | --- | --- |
| 1 | 1 | **C&C Project** | 1d? | 2011-10-11 | 2011-10-11 | 0d |  | 368h |
| 2 | 1.1 | **Prepare** | 1d? | 2011-10-11 | 2011-10-11 | 0d |  | 272h |
| 3 | 1.1.1 | Meeting for establishing group | 1d? | 2011-10-11 | 2011-10-11 | 0d | All Team | 8h |
| 4 | 1.1.2 | **Prepare documents, templates, development evironment** | 1d? | 2011-10-11 | 2011-10-11 | 0d |  | 56h |
| 5 | 1.1.2.1 | Biên bản thành lập nhóm.docx | 1d? | 2011-10-11 | 2011-10-11 | 0d | BaoNDD | 8h |
| 6 | 1.1.2.2 | Template for meeting minute | 1d? | 2011-10-11 | 2011-10-11 | 0d | TuTM | 8h |
| 7 | 1.1.2.3 | Bảng đánh giá công việc.docx | 1d? | 2011-10-11 | 2011-10-11 | 0d | TuanVA | 8h |
| 8 | 1.1.2.4 | Template MemberTracking.xls | 1d? | 2011-10-11 | 2011-10-11 | 0d | HuyNVK | 8h |
| 9 | 1.1.2.5 | Template ScreenDesign.xls | 1d? | 2011-10-11 | 2011-10-11 | 0d | HuyNVK | 8h |
| 10 | 1.1.2.6 | Template DefectLog.xls | 1d? | 2011-10-11 | 2011-10-11 | 0d | HuyNVK | 8h |
| 11 | 1.1.2.7 | Set up project on Google Code | 1d? | 2011-10-11 | 2011-10-11 | 0d | HuyNVK | 8h |
| 12 | 1.1.3 | **Study** | 1d? | 2011-10-11 | 2011-10-11 | 0d |  | 208h |
| 13 | 1.1.3.1 | **HTML/CSS** | 1d? | 2011-10-11 | 2011-10-11 | 0d |  | 8h |
| 14 | 1.1.3.1.1 | Demo design site by HTML/CSS | 1d? | 2011-10-11 | 2011-10-11 | 0d | HuyNVK | 8h |
| 15 | 1.1.3.2 | **PHP** | 1d? | 2011-10-11 | 2011-10-11 | 0d |  | 88h |
| 16 | 1.1.3.2.1 | Demo login by PHP, MySQL | 1d? | 2011-10-11 | 2011-10-11 | 0d | DungDV | 8h |
| 17 | 1.1.3.2.2 | Demo login by PHP, MySQL | 1d? | 2011-10-11 | 2011-10-11 | 0d | DucNH | 8h |
| 18 | 1.1.3.2.3 | Demo login by PHP, MySQL | 1d? | 2011-10-11 | 2011-10-11 | 0d | HienTT | 8h |
| 19 | 1.1.3.2.4 | Demo login by PHP, MySQL | 1d? | 2011-10-11 | 2011-10-11 | 0d | HuyDV | 8h |
| 20 | 1.1.3.2.5 | Demo login by PHP, MySQL | 1d? | 2011-10-11 | 2011-10-11 | 0d | HuyNVK | 8h |
| 21 | 1.1.3.2.6 | Demo login by PHP, MySQL | 1d? | 2011-10-11 | 2011-10-11 | 0d | LinhTA | 8h |
| 22 | 1.1.3.2.7 | Demo login by PHP, MySQL | 1d? | 2011-10-11 | 2011-10-11 | 0d | ThanhCV | 8h |
| 23 | 1.1.3.2.8 | Demo login by PHP, MySQL | 1d? | 2011-10-11 | 2011-10-11 | 0d | ThaoNX | 8h |
| 24 | 1.1.3.2.9 | Demo login by PHP, MySQL | 1d? | 2011-10-11 | 2011-10-11 | 0d | ThiVT | 8h |
| 25 | 1.1.3.2.10 | Demo login by PHP, MySQL | 1d? | 2011-10-11 | 2011-10-11 | 0d | TuTM | 8h |
| 26 | 1.1.3.2.11 | Demo login by PHP, MySQL | 1d? | 2011-10-11 | 2011-10-11 | 0d | KhoaVT | 8h |

| ID | WBS | Task | Duration | Start | Finish | Total slack | Resources | Work |
| --- | --- | --- | --- | --- | --- | --- | --- | --- |
| 27 | 1.1.3.3 | **Zend Framework** | 1d? | 2011-10-11 | 2011-10-11 | 0d |  | 112h |
| 28 | 1.1.3.3.1 | MVC model and Zend Framework introduction | 1d? | 2011-10-11 | 2011-10-11 | 0d | ThaoNX | 8h |
| 29 | 1.1.3.3.2 | Set up muti-module project by Zend Studio | 1d? | 2011-10-11 | 2011-10-11 | 0d | HuyDV | 8h |
| 30 | 1.1.3.3.3 | Demo login by Zend Framework | 1d? | 2011-10-11 | 2011-10-11 | 0d | DungDV | 8h |
| 31 | 1.1.3.3.4 | Demo login by Zend Framework | 1d? | 2011-10-11 | 2011-10-11 | 0d | DucNH | 8h |
| 32 | 1.1.3.3.5 | Demo login by Zend Framework | 1d? | 2011-10-11 | 2011-10-11 | 0d | HienTT | 8h |
| 33 | 1.1.3.3.6 | Demo login by Zend Framework | 1d? | 2011-10-11 | 2011-10-11 | 0d | HuyDV | 8h |
| 34 | 1.1.3.3.7 | Demo login by Zend Framework | 1d? | 2011-10-11 | 2011-10-11 | 0d | HuyNVK | 8h |
| 35 | 1.1.3.3.8 | Demo login by Zend Framework | 1d? | 2011-10-11 | 2011-10-11 | 0d | LinhTA | 8h |
| 36 | 1.1.3.3.9 | Demo login by Zend Framework | 1d? | 2011-10-11 | 2011-10-11 | 0d | ThanhCV | 8h |
| 37 | 1.1.3.3.10 | Demo login by Zend Framework | 1d? | 2011-10-11 | 2011-10-11 | 0d | ThaoNX | 8h |
| 38 | 1.1.3.3.11 | Demo login by Zend Framework | 1d? | 2011-10-11 | 2011-10-11 | 0d | ThiVT | 8h |
| 39 | 1.1.3.3.12 | Demo login by Zend Framework | 1d? | 2011-10-11 | 2011-10-11 | 0d | TuTM | 8h |
| 40 | 1.1.3.3.13 | Demo login by Zend Framework | 1d? | 2011-10-11 | 2011-10-11 | 0d | KhoaVT | 8h |
| 41 | 1.1.3.3.14 | Demo simple CMS by Zend Framework | 1d? | 2011-10-11 | 2011-10-11 | 0d | HuyDV | 8h |
| 42 | 1.2 | **Analysis and Requirement** | 1d? | 2011-10-11 | 2011-10-11 | 0d |  | 8h |
| 43 | 1.2.1 | Review Software Specification | 1d? | 2011-10-11 | 2011-10-11 | 0d | All Team | 8h |
| 44 | 1.3 | **Design** | 1d? | 2011-10-11 | 2011-10-11 | 0d |  | 88h |
| 45 | 1.3.1 | **Screen Design** | 1d? | 2011-10-11 | 2011-10-11 | 0d |  | 88h |
| 46 | 1.3.1.1 | Menu Manager | 1d? | 2011-10-11 | 2011-10-11 | 0d | ThiVT | 8h |
| 47 | 1.3.1.2 | Configuration | 1d? | 2011-10-11 | 2011-10-11 | 0d | ThaoNX | 8h |
| 48 | 1.3.1.3 | Content Manager | 1d? | 2011-10-11 | 2011-10-11 | 0d | DungDV + DucNH + TuTM | 8h |
| 49 | 1.3.1.4 | User Manager | 1d? | 2011-10-11 | 2011-10-11 | 0d | ThanhCV + KhoaVT | 8h |
| 50 | 1.3.1.5 | **Media Manager** | 1d? | 2011-10-11 | 2011-10-11 | 0d | HuyNVK + HienTT | 32h |
| 51 | 1.3.1.5.1 | Media Manager | 1d? | 2011-10-11 | 2011-10-11 | 0d | HienTT | 8h |
| 52 | 1.3.1.5.2 | Media Option_Permission | 1d? | 2011-10-11 | 2011-10-11 | 0d | HuyNVK | 8h |
| 53 | 1.3.1.5.3 | Media Option_Component | 1d? | 2011-10-11 | 2011-10-11 | 0d | HuyNVK | 8h |
| 54 | 1.3.1.6 | Login | 1d? | 2011-10-11 | 2011-10-11 | 0d | LinhTA | 8h |
| 55 | 1.3.1.7 | Language Manager | 1d? | 2011-10-11 | 2011-10-11 | 0d | LinhTA | 8h |
| 56 | 1.3.1.8 | Layout and navigation | 1d? | 2011-10-11 | 2011-10-11 | 0d | HuyDV | 8h |
| 57 | 1.4 | Development | 1d? | 2011-10-11 | 2011-10-11 | 0d |  |  |
| 58 | 1.5 | Testing | 1d? | 2011-10-11 | 2011-10-11 | 0d |  |  |
| 59 | 1.6 | Documentation | 1d? | 2011-10-11 | 2011-10-11 | 0d |  |  |
| 60 | 1.7 | Deployment & Pilot | 1d? | 2011-10-11 | 2011-10-11 | 0d |  |  |
